# Cronograma_MeuPetEmDia

How a schedule from ProjectLibre changed from version to version. A marks actual dates.

## Version 1 (saved 2025-11-12)

Note of the change: feat(documentação): cria pasta de documentação e insere arquivos

| ID | WBS | Task | Duration | Start | Finish | Predecessors | Complete | Constraint |
| --- | --- | --- | --- | --- | --- | --- | --- | --- |
| 1 | 1 | **Meu PET em Dia** | 110.1d? | 2025-08-22 | 2025-11-26 |  | 56% | start no earlier than 2025-08-22 |
| 2 | 1.1 | **Prospecção** | 76.8d? | 2025-08-22 | 2025-10-28 |  | 71% |  |
| 3 | 1.1.1 | **PTEC** | 2.43d? | 2025-08-22 | 2025-08-25 |  | 100% |  |
| 4 |  | Estudar Domínio de Aplicação | 0.73d? | 2025-08-22 | 2025-08-22 |  | 100% |  |
| 5 |  | Reunir-se Com Fornecedor de Requisitos | 0.2d? | 2025-08-22 | 2025-08-22 | 4 | 100% |  |
| 6 |  | Redigir PTEC | 1d | 2025-08-22 | 2025-08-25 | 5 | 100% |  |
| 7 |  | Revisar PTEC | 0.4d? | 2025-08-25 | 2025-08-25 | 6 | 100% |  |
| 8 |  | Aprova PTEC | 0.1d? | 2025-08-25 | 2025-08-25 | 7 | 100% |  |
| 9 | 1.1.2 | **Documento de Requisitos** | 74.37d? | 2025-08-25 | 2025-10-28 |  | 65% |  |
| 10 |  | Reunir-se Com o Cliente | 0.4d? | 2025-08-25 | 2025-08-26 | 3 | 100% |  |
| 11 |  | Elaborar DRE | 2d | 2025-08-26 | 2025-08-27 | 10 | 100% |  |
| 12 |  | Revisar DRE | 0.33d | 2025-09-01 | 2025-09-01 | 11 | 100% | start no earlier than 2025-09-01 |
| 13 |  | Redigir DRE | 2d | 2025-10-26 | 2025-10-28 | 12 |  | start no earlier than 2025-10-26 |
| 14 | 1.2 | **Análise** | 66.9d? | 2025-09-01 | 2025-10-28 |  | 58% |  |
| 15 | 1.2.1 | **Est. Prel. Tam.** | 1.05d? | 2025-09-01 | 2025-09-02 |  | 100% |  |
| 16 |  | Estimar Tamanho do Projeto | 1d | 2025-09-01 | 2025-09-02 | 12 | 100% |  |
| 17 |  | Revisar Estimativa do Tamanho do Projeto | 0.05d? | 2025-09-02 | 2025-09-02 | 16 | 100% |  |
| 18 | 1.2.2 | **Est. Prel. Cronograma e Orçamento** | 65.85d | 2025-09-02 | 2025-10-28 |  | 33% |  |
| 19 |  | Elaborar Cronograma e Orçamentos Preliminares | 1d | 2025-09-02 | 2025-09-02 | 15 | 100% |  |
| 20 |  | Revisar Cronograma e Orçamentos Preliminares | 1d | 2025-10-27 | 2025-10-28 | 19 |  | start no earlier than 2025-10-27 |
| 21 | 1.2.3 | **MRB** | 0.5d? | 2025-10-27 | 2025-10-27 |  | 100% |  |
| 22 |  | Elaborar MRB | 0.4d? | 2025-10-27 | 2025-10-27 | 11 | 100% | start no earlier than 2025-10-27 |
| 23 |  | Revisar MRB | 0.1d? | 2025-10-27 | 2025-10-27 | 22 | 100% |  |
| 24 | 1.3 | **Desenvolvimento** | 23.2d | 2025-10-29 | 2025-11-19 |  | 64% | start no earlier than 2025-10-29 |
| 25 | 1.3.1 | **Release 01** | 4d | 2025-10-29 | 2025-11-03 |  | 100% |  |
| 26 | 1.3.1.1 | **Implementação e teste** | 4d | 2025-10-29 | 2025-11-03 |  | 100% |  |
| 27 | 1.3.1.1.1 | **RFC01 (Manter Usuário)** | 4d | 2025-10-29 | 2025-11-03 |  | 100% |  |
| 28 | 1.3.1.1.1.1 | **Implementar RFC01** | 4d | 2025-10-29 | 2025-11-03 |  | 100% |  |
| 29 |  | Implementar RFS01 | 1d | 2025-10-29 | 2025-10-30 | 21 | 100% | start no earlier than 2025-09-02 |
| 30 |  | Implementar RFS02 | 1d | 2025-10-30 | 2025-10-31 | 29 | 100% |  |
| 31 |  | Implementar RFS03 | 1d | 2025-10-31 | 2025-10-31 | 30 | 100% |  |
| 32 |  | Implementar RFS04 | 1d | 2025-10-31 | 2025-11-03 | 31 | 100% |  |
| 33 | 1.3.1.1.1.2 | **Teste RFC01** | 4d | 2025-10-29 | 2025-11-03 |  | 100% |  |
| 34 |  | Testar RFC01 | 4d | 2025-10-29 | 2025-11-03 | 28SS | 100% | start no earlier than 2025-09-03 |
| 35 | 1.3.1.1.2 | **RFC02 (Manter PETS)** | 4d | 2025-10-29 | 2025-11-03 |  | 100% |  |
| 36 | 1.3.1.1.2.1 | **Implementar RFC02** | 4d | 2025-10-29 | 2025-11-03 |  | 100% |  |
| 37 |  | Implementar RFS05 | 1d | 2025-10-29 | 2025-10-30 | 21 | 100% |  |
| 38 |  | Implementar RFS06 | 1d | 2025-10-30 | 2025-10-31 | 37 | 100% |  |
| 39 |  | Implementar RFS07 | 1d | 2025-10-31 | 2025-10-31 | 38 | 100% |  |
| 40 |  | Implementar RFS08 | 1d | 2025-10-31 | 2025-11-03 | 39 | 100% |  |
| 41 | 1.3.1.1.2.2 | **Teste RFC02** | 4d | 2025-10-29 | 2025-11-03 |  | 100% |  |
| 42 |  | Testar RFC02 | 4d | 2025-10-29 | 2025-11-03 | 36SS | 100% | start no earlier than 2025-09-03 |
| 43 | 1.3.2 | **Release 02** | 6.8d | 2025-11-05 | 2025-11-11 |  | 100% | start no earlier than 2025-11-04 |
| 44 | 1.3.2.1 | **Implementação e teste** | 6.8d | 2025-11-05 | 2025-11-11 |  | 100% |  |
| 45 | 1.3.2.1.1 | **RFC03 (Manter Agenda de Cuidados)** | 6.8d | 2025-11-05 | 2025-11-11 |  | 100% |  |
| 46 | 1.3.2.1.1.1 | **Implementar RFC03** | 4.6d | 2025-11-05 | 2025-11-10 |  | 100% |  |
| 47 |  | Implementar RFS09 | 1d | 2025-11-05 | 2025-11-06 | 25 | 100% | start no earlier than 2025-11-05 |
| 48 |  | Implementar RFS10 | 1d | 2025-11-06 | 2025-11-06 | 47 | 100% |  |
| 49 |  | Implementar RFS11 | 1d | 2025-11-07 | 2025-11-07 | 48 | 100% |  |
| 50 |  | Implementar RFS12 | 1d | 2025-11-10 | 2025-11-10 | 49 | 100% | start no earlier than 2025-11-08 |
| 51 | 1.3.2.1.1.2 | **Teste RFC03** | 3.6d | 2025-11-07 | 2025-11-11 |  | 100% |  |
| 52 |  | Testar RFC03 | 3.6d | 2025-11-07 | 2025-11-11 | 46SS | 100% | start no earlier than 2025-11-07 |
| 53 | 1.3.2.1.2 | **RFC04 (Manter Histórico de Saúde)** | 6.8d | 2025-11-05 | 2025-11-11 |  | 100% |  |
| 54 | 1.3.2.1.2.1 | **Implementar RFC04** | 4.6d | 2025-11-05 | 2025-11-10 |  | 100% |  |
| 55 |  | Implementar RFS13 | 1d | 2025-11-05 | 2025-11-06 | 25 | 100% | start no earlier than 2025-11-05 |
| 56 |  | Implementar RFS14 | 1d | 2025-11-06 | 2025-11-06 | 55 | 100% |  |
| 57 |  | Implementar RFS15 | 1d | 2025-11-07 | 2025-11-07 | 56 | 100% |  |
| 58 |  | Implementar RFS16 | 1d | 2025-11-10 | 2025-11-10 | 57 | 100% | start no earlier than 2025-11-08 |
| 59 | 1.3.2.1.2.2 | **Teste RFC04** | 3.6d | 2025-11-07 | 2025-11-11 |  | 100% |  |
| 60 |  | Testar RFC04 | 3.6d | 2025-11-07 | 2025-11-11 | 54SS | 100% | start no earlier than 2025-11-07 |
| 61 | 1.3.3 | **Release 3** | 5.6d | 2025-11-12 | 2025-11-17 |  |  | start no earlier than 2025-11-11 |
| 62 | 1.3.3.1 | **Implementação e Teste** | 5.6d | 2025-11-12 | 2025-11-17 |  |  |  |
| 63 | 1.3.3.1.1 | **RFC06 (Manter Controle Financeiro)** | 5.6d | 2025-11-12 | 2025-11-17 | 50 |  | start no earlier than 2025-11-12 |
| 64 | 1.3.3.1.1.1 | **Implementar RFC06** | 5.4d | 2025-11-12 | 2025-11-17 |  |  | start no earlier than 2025-11-12 |
| 65 |  | Implementar RFS18 | 1d | 2025-11-12 | 2025-11-12 | 43 |  | start no earlier than 2025-11-12 |
| 66 |  | Implementar RFS19 | 1d | 2025-11-13 | 2025-11-13 | 65 |  | start no earlier than 2025-11-13 |
| 67 |  | Implementar RFS20 | 1d | 2025-11-14 | 2025-11-14 | 66 |  | start no earlier than 2025-11-14 |
| 68 |  | Implementar RFS17 | 1d | 2025-11-15 | 2025-11-17 | 67 |  | start no earlier than 2025-11-15 |
| 69 | 1.3.3.1.1.2 | **TesteRFC06** | 4d | 2025-11-13 | 2025-11-17 |  |  | start no earlier than 2025-11-13 |
| 70 |  | Testar RFC06 | 4d | 2025-11-13 | 2025-11-17 | 64SS |  | start no earlier than 2025-11-12 |

| ID | WBS | Task | Duration | Start | Finish | Predecessors | Constraint |
| --- | --- | --- | --- | --- | --- | --- | --- |
| 71 | 1.3.3.1.2 | **RFC07 (Relatório de Saúde)** | 3d | 2025-11-13 | 2025-11-17 |  | start no earlier than 2025-11-13 |
| 72 | 1.3.3.1.2.1 | **Implementar RFC07** | 2d | 2025-11-13 | 2025-11-14 |  |  |
| 73 |  | Implementar Relatório de Saúde | 2d | 2025-11-13 | 2025-11-14 | 43 |  |
| 74 | 1.3.3.1.2.2 | **Teste RFC07** | 3d | 2025-11-13 | 2025-11-17 |  |  |
| 75 |  | Testar Relatório de Saúde | 3d | 2025-11-13 | 2025-11-17 | 73SS |  |
| 76 | 1.3.4 | **Release 4** | 2.4d | 2025-11-17 | 2025-11-19 |  | start no earlier than 2025-11-17 |
| 77 | 1.3.4.1 | **Implementação e teste** | 2.4d | 2025-11-17 | 2025-11-19 |  |  |
| 78 | 1.3.4.1.1 | **RFC08 (Relatório de Gastos)** | 2.4d | 2025-11-17 | 2025-11-19 |  |  |
| 79 | 1.3.4.1.1.1 | **Implementar RFC08** | 2.4d | 2025-11-17 | 2025-11-19 |  |  |
| 80 |  | Implementar Relatório de Gastos | 2.4d | 2025-11-17 | 2025-11-19 | 69 |  |
| 81 | 1.3.4.1.1.2 | **Teste RFC08** | 2.4d | 2025-11-17 | 2025-11-19 |  |  |
| 82 |  | Testar Relatório de Gastos | 2.4d | 2025-11-17 | 2025-11-19 | 80SS |  |
| 83 | 1.4 | **Monitoramento e Controle** | 3d | 2025-11-19 | 2025-11-21 |  |  |
| 84 |  | Acompanhar Projeto | 3d | 2025-11-19 | 2025-11-21 | 24 |  |
| 85 | 1.5 | **Fechamento** | 0.5d | 2025-11-19 | 2025-11-19 |  |  |
| 86 |  | Fechamento | 0.5d | 2025-11-19 | 2025-11-19 | 24 |  |
| 87 | 1.6 | **Controle de Mudanças** | 7d | 2025-11-19 | 2025-11-26 |  |  |
| 88 |  | Controle de Mudanças | 7d | 2025-11-19 | 2025-11-26 | 85 |  |

## Version 2 (saved 2025-11-18)

Note of the change: rfc06e07

Last finish stays 2025-11-26. Complete tasks 33 → 40.

Changed:

| ID | Task | Start | Complete |
| --- | --- | --- | --- |
| 1 | **Meu PET em Dia** |  | 56% → 72% |
| 24 | **Desenvolvimento** |  | 64% → 90% |
| 61 | **Release 3** |  | 0% → 100% |
| 62 | **Implementação e Teste** |  | 0% → 100% |
| 63 | **RFC06 (Manter Controle Financeiro)** |  | 0% → 100% |
| 64 | **Implementar RFC06** |  | 0% → 100% |
| 65 | Implementar RFS18 |  | 0% → 100% |
| 66 | Implementar RFS19 |  | 0% → 100% |
| 67 | Implementar RFS20 |  | 0% → 100% |
| 68 | Implementar RFS17 | 2025-11-15 → 2025-11-17 (+2d) | 0% → 100% |
| 69 | **TesteRFC06** |  | 0% → 100% |
| 70 | Testar RFC06 |  | 0% → 100% |
| 71 | **RFC07 (Relatório de Saúde)** |  | 0% → 100% |
| 72 | **Implementar RFC07** |  | 0% → 100% |
| 73 | Implementar Relatório de Saúde |  | 0% → 100% |
| 74 | **Teste RFC07** |  | 0% → 100% |
| 75 | Testar Relatório de Saúde |  | 0% → 100% |

## Version 3 (saved 2025-11-25)

Note of the change: feat: atualiza documentação

Last finish 2025-11-26 → 2025-12-02 (+6d). Complete tasks 40 → 47.

Added:

| ID | Task | Duration | Start | Finish | Predecessors | Constraint | Resources |
| --- | --- | --- | --- | --- | --- | --- | --- |
| 83 | **RFC09(Avaliar Serviçoes e Profissionais)** | 5.6d? | 2025-11-19 | 2025-11-25 |  |  |  |
| 84 | **Implementar RFC09** | 4.4d? | 2025-11-19 | 2025-11-24 |  |  |  |
| 85 | Implementar RFS21 | 1d? | 2025-11-19 | 2025-11-20 | 61 | start no earlier than 2025-11-19 | Luara |
| 86 | Implementar RFS22 | 1d? | 2025-11-20 | 2025-11-21 | 85 |  | Luara |
| 87 | Implementar RFS23 | 1d? | 2025-11-21 | 2025-11-21 | 86 |  | Luara |
| 88 | Implementar RFS24 | 1d? | 2025-11-24 | 2025-11-24 | 87 | start no earlier than 2025-11-22 | Luara |
| 89 | **Teste RFC09** | 4d? | 2025-11-20 | 2025-11-25 |  |  |  |
| 90 | Testar RFC09 | 4d? | 2025-11-20 | 2025-11-25 | 85SS | start no earlier than 2025-11-20 | José |

Changed:

| ID | Task | Start | Finish | Duration | Complete | Predecessors | Other |
| --- | --- | --- | --- | --- | --- | --- | --- |
| 1 | **Meu PET em Dia** |  | 2025-11-26 → 2025-12-02 (+6d) | 110.1d? → 117.1d? | 72% → 87% |  |  |
| 24 | **Desenvolvimento** |  | 2025-11-19 → 2025-11-25 (+6d) | 23.2d → 29.6d? | 90% → 100% |  |  |
| 76 | **Release 4** |  | 2025-11-19 → 2025-11-25 (+6d) | 2.4d → 8.8d? | 0% → 100% |  |  |
| 77 | **Implementação e teste** |  | 2025-11-19 → 2025-11-25 (+6d) | 2.4d → 8.8d? | 0% → 100% |  |  |
| 78 | **RFC08 (Relatório de Gastos)** |  |  | 2.4d → 2.4d? | 0% → 100% |  |  |
| 79 | **Implementar RFC08** |  |  |  | 0% → 100% |  |  |
| 80 | Implementar Relatório de Gastos |  |  |  | 0% → 100% | 69 → 61 |  |
| 81 | **Teste RFC08** |  |  | 2.4d → 2.4d? | 0% → 100% |  |  |
| 82 | Testar Relatório de Gastos |  |  | 2.4d → 2.4d? | 0% → 100% |  |  |
| 91 | **Monitoramento e Controle** | 2025-11-19 → 2025-11-26 (+7d) | 2025-11-21 → 2025-11-27 (+6d) | 3d → 2d |  |  |  |
| 92 | Acompanhar Projeto | 2025-11-19 → 2025-11-26 (+7d) | 2025-11-21 → 2025-11-27 (+6d) | 3d → 2d |  |  | constraint none → start no earlier than 2025-11-26 |
| 93 | **Fechamento** | 2025-11-19 → 2025-11-29 (+10d) | 2025-11-19 → 2025-12-01 (+12d) | 0.5d → 0.3d |  |  |  |
| 94 | Fechamento | 2025-11-19 → 2025-11-29 (+10d) | 2025-11-19 → 2025-12-01 (+12d) | 0.5d → 0.3d |  | 24 → 91 | constraint none → start no earlier than 2025-11-29 |
| 95 | **Controle de Mudanças** | 2025-11-19 → 2025-12-01 (+12d) | 2025-11-26 → 2025-12-02 (+6d) | 7d → 2d |  |  |  |
| 96 | Controle de Mudanças | 2025-11-19 → 2025-12-01 (+12d) | 2025-11-26 → 2025-12-02 (+6d) | 7d → 2d |  |  |  |
